# Propeller-project file

How a schedule from MS Project changed from version to version. A marks actual dates.

## Version 1 (data date 2013-10-01, saved 2014-04-13, file PMP-pLED.mpp)

Note of the change: Update Schedule

| ID | WBS | Task | Duration | Start | Finish | Predecessors | Complete | Total float | Constraint |
| --- | --- | --- | --- | --- | --- | --- | --- | --- | --- |
| 1 | 1 | **Initiate** | 18.5d | 2013-12-25 A | 2014-01-16 A |  | 100% |  |  |
| 2 |  | Ideas, Brainstorming | 4d | 2013-12-25 A | 2013-12-30 A |  | 100% |  | start no earlier than 2013-12-25 |
| 3 |  | Research existed product | 4d | 2013-12-30 A | 2014-01-03 A | 2 | 100% |  |  |
| 4 |  | Evaluation omponents available | 2d | 2014-01-03 A | 2014-01-06 A | 3 | 100% |  |  |
| 5 |  | Technology research | 9d | 2014-01-03 A | 2014-01-15 A | 3 | 100% |  |  |
| 6 |  | Scheduling project | 1.5d | 2014-01-15 A | 2014-01-16 A | 5 | 100% |  |  |
| 7 | 2 | **Planing** | 4.5d | 2014-01-17 A | 2014-01-22 A | 6 | 100% |  |  |
| 8 |  | Product Description | 1d | 2014-01-17 A | 2014-01-20 A |  | 100% |  |  |
| 9 |  | Design software structure | 1.5d | 2014-01-17 A | 2014-01-18 A |  | 100% |  |  |
| 10 |  | Report 1,2 | 2d | 2014-01-20 A | 2014-01-21 A |  | 100% |  | start no earlier than 2014-01-20 |
| 11 |  | System Requirement Documentation | 3d | 2014-01-20 A | 2014-01-22 A | 9 | 100% |  |  |
| 12 | 3 | **Implementation** | 48d | 2014-01-23 A | 2014-03-27 | 11 | 89% | 22d |  |
| 13 |  | Collecting components | 2d | 2014-01-23 A | 2014-01-24 A |  | 100% |  |  |
| 14 |  | Prepare testing kit | 2d | 2014-01-24 A | 2014-01-28 A | 13 | 100% |  |  |
| 15 |  | Testing to allocate hardware limitation | 1.5d | 2014-01-28 A | 2014-01-29 A | 14 | 100% |  |  |
| 16 |  | Report 3 | 1d | 2014-02-14 A | 2014-02-14 A |  | 100% |  |  |
| 17 |  | Design schematic | 5d | 2014-01-31 A | 2014-02-06 A | 15 | 100% |  |  |
| 18 |  | Write firmware on Emulated system | 14d | 2014-02-18 A | 2014-03-10 A | 17, 21FF | 100% |  |  |
| 19 |  | Design mainboard | 5d | 2014-02-06 A | 2014-02-12 A | 17 | 100% |  |  |
| 20 |  | Report 4 | 1d | 2014-02-28 A | 2014-02-28 A |  | 100% |  |  |
| 21 |  | Printing board design | 16d | 2014-02-14 A | 2014-03-10 A | 19 | 100% |  | start no earlier than 2014-01-12 |
| 22 |  | Dowload Firmware | 14d | 2014-03-11 A | 2014-03-27 | 21 | 55% | 22d |  |
| 23 |  | Fuse hardware component together | 2d | 2014-03-11 A | 2014-03-12 A | 21 | 100% |  |  |
| 24 |  | Report 5 | 1d | 2014-03-15 | 2014-03-17 |  |  |  |  |
| 25 | 4 | **Physical optimation** | 14d | 2014-03-11 A | 2014-03-27 A |  | 100% |  |  |
| 26 |  | Balance the rotating parts | 7d | 2014-03-11 A | 2014-03-19 A | 21 | 100% |  |  |
| 27 |  | Create stand structure for stability operating | 7d | 2014-03-19 A | 2014-03-27 A | 26 | 100% |  |  |
| 28 | 5 | **Business Operation** | 8d | 2014-03-28 A | 2014-04-07 A | 27 | 100% |  |  |
| 29 |  | Complete coding and design documents | 5d | 2014-03-28 A | 2014-04-03 A | 27 | 100% |  |  |
| 30 |  | Write User manual | 4d | 2014-03-28 A | 2014-04-02 A |  | 100% |  |  |
| 31 |  | Report 6 | 1d | 2014-04-07 A | 2014-04-07 A |  | 100% |  | start no earlier than 2014-04-07 |
| 32 |  | Delivery documents | 0d | 2014-04-15 | 2014-04-15 |  |  | 8.5d | start no earlier than 2014-04-15 |
| 33 |  | Delivery | 0d | 2014-04-25 | 2014-04-25 |  |  | 0d | start no earlier than 2014-04-25 |

## Version 2 (data date 2013-10-01, saved 2014-04-13, file PMP-pLED v1.1.mpp)

Note of the change: Add new

Last finish stays 2014-04-25. Complete tasks 24 → 29.

Added:

| ID | Task | Duration | Start | Finish | Predecessors | Resources |
| --- | --- | --- | --- | --- | --- | --- |
| 9 | Report 1 | 0d | 2014-01-16 A | 2014-01-16 A |  |  |
| 24 | Redesign schematic,circuit board v2 | 2d | 2014-02-24 A | 2014-02-26 A | 22 | LongNT; TungNT |
| 25 | Print redesigned circuit board v2 | 6d | 2014-02-26 A | 2014-03-08 A | 24 | BanDV; TungNT |
| 31 | 24h durability testing | 1d | 2014-03-28 A | 2014-03-28 A |  |  |

Removed: 23 Fuse hardware component together

Changed:

| ID | Task | Start | Finish | Duration | Complete | Total float | Predecessors | Other |
| --- | --- | --- | --- | --- | --- | --- | --- | --- |
| 7 | **Planing** | 2014-01-17 A → 2014-01-16 A (-1d) |  |  |  |  |  |  |
| 10 | Design software structure |  | 2014-01-18 A → 2014-01-21 A (+3d) | 1.5d → 3d |  |  |  | resources BachDX; BanDV; HaiDQ; LongNT → HaiDQ; LongNT |
| 11 | Report 2 |  | 2014-01-21 A → 2014-01-20 A (-1d) | 2d → 0d |  |  |  | was named Report 1,2 |
| 13 | **Implementation** |  | 2014-03-27 → 2014-03-25 A (-2d) | 48d → 46d | 89% → 100% | 22d → none |  |  |
| 17 | Report 3 |  |  | 1d → 0d |  |  |  |  |
| 19 | Write firmware on Emulated system | 2014-02-18 A → 2014-02-08 A (-10d) |  | 14d → 21d |  |  |  |  |
| 20 | Design PCB |  |  |  |  |  |  | was named Design mainboard |
| 21 | Report 4 |  |  | 1d → 0d |  |  |  |  |
| 22 | Print circuit board |  | 2014-03-10 A → 2014-02-24 A (-14d) | 16d → 7d |  |  |  | was named Printing board design |
| 23 | Experiment firmware on real hardware | 2014-03-11 A → 2014-02-24 A (-15d) | 2014-03-27 → 2014-03-25 A (-2d) | 14d → 21d | 55% → 100% | 22d → none |  | was named Dowload Firmware |
| 26 | Report 5 | 2014-03-15 → 2014-03-14 A (-1d) | 2014-03-17 → 2014-03-14 A (-3d) | 1d → 0d | 0% → 100% |  |  | constraint none → finish no earlier than 2014-03-14 |
| 27 | **Physical optimation** | 2014-03-11 A → 2014-03-10 A (-1d) |  | 14d → 15d |  |  |  |  |
| 28 | Balance the rotating parts | 2014-03-11 A → 2014-03-10 A (-1d) | 2014-03-19 A → 2014-03-18 A (-1d) |  |  |  | 22 → 25 | resources BachDX; BanDV; TungNT → BachDX; TungNT |
| 30 | **Business Operation** |  |  | 8d → 7d |  |  |  |  |
| 34 | Report 6 |  |  | 1d → 0d |  |  |  |  |
